# GModelo ISO27001 ISMS Assessment-V2

Schedule from MS Project, 2010-05-05 to 2010-09-28.
Grupo Scanda/ Kenos

## Calendars

- Standard: Mon-Fri 08:00-12:00, 13:00-17:00; Sat-Sun off.

## Schedule

| ID | WBS | Task | Type | Duration | Start | Finish | Predecessors | Total slack | Free slack | Constraint |
| --- | --- | --- | --- | --- | --- | --- | --- | --- | --- | --- |
| 1 | 1 | **GRUPO MODELO ASSESSMENT SEGURIDAD TI** |  | 104.12d | 2010-05-05 | 2010-09-28 |  | 0d |  |  |
| 2 | 1.1 | **Etapa 1** |  | 43d | 2010-05-05 | 2010-07-02 |  | 61.12d |  |  |
| 3 | 1.1.1 | **Análisis de procesos** |  | 43d | 2010-05-05 | 2010-07-02 |  | 61.12d |  |  |
| 4 | 1.1.1.1 | **5.0 Security Policy** |  | 15d | 2010-05-05 | 2010-05-25 |  | 89.12d |  |  |
| 5 | 1.1.1.1.1 | **Information Security Policy** |  | 6d | 2010-05-05 | 2010-05-12 |  | 89.12d |  |  |
| 6 | 1.1.1.1.1.1 | Information Security Policy Document |  | 2d | 2010-05-05 | 2010-05-06 |  | 89.12d | 0d | start no earlier than 2010-05-05 |
| 7 | 1.1.1.1.1.2 | Review of Information Security Policy |  | 4d | 2010-05-07 | 2010-05-12 | 6 | 89.12d | 0d |  |
| 8 | 1.1.1.1.2 | Information & Documents Review |  | 2d | 2010-05-13 | 2010-05-14 | 7 | 89.12d | 0d |  |
| 9 | 1.1.1.1.3 | Audits Reports |  | 1d | 2010-05-13 | 2010-05-13 | 7 | 90.12d | 1d |  |
| 10 | 1.1.1.1.4 | Evidence |  | 1d | 2010-05-13 | 2010-05-13 | 7 | 90.12d | 1d |  |
| 11 | 1.1.1.1.5 | Interviews |  | 2d | 2010-05-13 | 2010-05-14 | 7 | 89.12d | 0d |  |
| 12 | 1.1.1.1.6 | Final Report |  | 2d | 2010-05-17 | 2010-05-18 | 8, 9, 10, 11 | 89.12d | 0d |  |
| 13 | 1.1.1.1.7 | VoBo Gmodelo |  | 2d | 2010-05-19 | 2010-05-20 | 12 | 89.12d | 0d |  |
| 14 | 1.1.1.1.8 | Scanda Modifications |  | 3d | 2010-05-21 | 2010-05-25 | 13 | 89.12d | 0d |  |
| 15 | 1.1.1.1.9 | VoBo Scanda Gmodelo | milestone | 0d | 2010-05-25 | 2010-05-25 | 14 | 89.12d |  |  |
| 16 | 1.1.1.2 | **6.0 Organization of Information Security** |  | 27d | 2010-05-24 | 2010-06-29 |  | 64.12d |  |  |
| 17 | 1.1.1.2.1 | **Internal Organization** |  | 8d | 2010-05-24 | 2010-06-02 |  | 64.12d |  |  |
| 18 | 1.1.1.2.1.1 | Management Commitment to information security |  | 2d | 2010-05-24 | 2010-05-25 |  | 64.12d | 0d | start no earlier than 2010-05-24 |
| 19 | 1.1.1.2.1.2 | Information security Co-ordination |  | 2d | 2010-05-24 | 2010-05-25 |  | 64.12d | 0d | start no earlier than 2010-05-24 |
| 20 | 1.1.1.2.1.3 | Allocation of information security Responsibilities |  | 2d | 2010-05-26 | 2010-05-27 | 18, 19 | 64.12d | 0d |  |
| 21 | 1.1.1.2.1.4 | Authorization process for Information Processing facilities |  | 2d | 2010-05-26 | 2010-05-27 | 18, 19 | 64.12d | 0d |  |
| 22 | 1.1.1.2.1.5 | Confidentiality agreements |  | 2d | 2010-05-28 | 2010-05-31 | 20, 21 | 64.12d | 0d |  |
| 23 | 1.1.1.2.1.6 | Contact with authorities |  | 2d | 2010-05-28 | 2010-05-31 | 20, 21 | 64.12d | 0d |  |
| 24 | 1.1.1.2.1.7 | Contact with special interest groups |  | 2d | 2010-06-01 | 2010-06-02 | 22, 23 | 83.12d |  |  |
| 25 | 1.1.1.2.1.8 | Independent review of information security |  | 2d | 2010-06-01 | 2010-06-02 | 22, 23 | 64.12d | 0d |  |

| ID | WBS | Task | Type | Duration | Start | Finish | Predecessors | Total slack | Free slack | Constraint |
| --- | --- | --- | --- | --- | --- | --- | --- | --- | --- | --- |
| 26 | 1.1.1.2.2 | **External Parties** |  | 7d | 2010-06-03 | 2010-06-11 |  | 64.12d |  |  |
| 27 | 1.1.1.2.2.1 | Identification of risk related to external parties |  | 2d | 2010-06-03 | 2010-06-04 | 25 | 64.12d | 0d |  |
| 28 | 1.1.1.2.2.2 | Addressing security when dealing with customers |  | 2d | 2010-06-07 | 2010-06-08 | 27 | 64.12d | 0d | start no earlier than 2010-06-07 |
| 29 | 1.1.1.2.2.3 | Addressing security in third party agreements |  | 3d | 2010-06-09 | 2010-06-11 | 28 | 64.12d | 0d |  |
| 30 | 1.1.1.2.3 | Information & Documents Review |  | 4d | 2010-06-14 | 2010-06-17 | 25, 29 | 72.12d |  |  |
| 31 | 1.1.1.2.4 | Audits Reports |  | 2d | 2010-06-14 | 2010-06-15 | 25, 29 | 64.12d | 0d |  |
| 32 | 1.1.1.2.5 | Evidence |  | 1d | 2010-06-16 | 2010-06-16 | 31 | 64.12d | 0d |  |
| 33 | 1.1.1.2.6 | Interviews |  | 2d | 2010-06-17 | 2010-06-18 | 32 | 64.12d | 0d |  |
| 34 | 1.1.1.2.7 | Final Report |  | 2d | 2010-06-21 | 2010-06-22 | 33 | 64.12d | 0d |  |
| 35 | 1.1.1.2.8 | VoBo Gmodelo |  | 2d | 2010-06-23 | 2010-06-24 | 34 | 64.12d | 0d |  |
| 36 | 1.1.1.2.9 | Scanda Modifications |  | 3d | 2010-06-25 | 2010-06-29 | 35 | 64.12d | 0d |  |
| 37 | 1.1.1.2.10 | VoBo Scanda Gmodelo | milestone | 0d | 2010-06-29 | 2010-06-29 | 36 | 64.12d |  |  |
| 38 | 1.1.1.3 | **7.0 Asset Management** |  | 25d | 2010-05-31 | 2010-07-02 |  | 61.12d |  |  |
| 39 | 1.1.1.3.1 | **Responsibility for Assets** |  | 10d | 2010-05-31 | 2010-06-11 |  | 61.12d |  |  |
| 40 | 1.1.1.3.1.1 | Inventory of assets |  | 5d | 2010-05-31 | 2010-06-04 |  | 61.12d | 0d | start no earlier than 2010-05-31 |
| 41 | 1.1.1.3.1.2 | Ownership of Assets |  | 5d | 2010-06-07 | 2010-06-11 | 40 | 76.12d |  |  |
| 42 | 1.1.1.3.1.3 | Acceptable use of assets |  | 5d | 2010-06-07 | 2010-06-11 | 40 | 61.12d | 0d |  |
| 43 | 1.1.1.3.2 | **Information classification** |  | 2d | 2010-06-14 | 2010-06-15 |  | 61.12d |  |  |
| 44 | 1.1.1.3.2.1 | Classification Guidelines |  | 2d | 2010-06-14 | 2010-06-15 | 42 | 74.12d |  |  |
| 45 | 1.1.1.3.2.2 | Information Labeling and Handling |  | 2d | 2010-06-14 | 2010-06-15 | 42 | 61.12d | 0d |  |
| 46 | 1.1.1.3.3 | Information & Documents Review |  | 4d | 2010-06-16 | 2010-06-21 | 42, 45 | 61.12d | 0d |  |
| 47 | 1.1.1.3.4 | Audits Reports |  | 2d | 2010-06-16 | 2010-06-17 | 42, 45 | 63.12d | 2d |  |
| 48 | 1.1.1.3.5 | Evidence |  | 2d | 2010-06-22 | 2010-06-23 | 46, 47 | 61.12d | 0d |  |
| 49 | 1.1.1.3.6 | Interviews |  | 1d | 2010-06-24 | 2010-06-24 | 48 | 61.12d | 0d |  |
| 50 | 1.1.1.3.7 | Final Report |  | 1d | 2010-06-25 | 2010-06-25 | 49 | 61.12d | 0d |  |
| 51 | 1.1.1.3.8 | VoBo Gmodelo |  | 2d | 2010-06-28 | 2010-06-29 | 50 | 61.12d | 0d |  |
| 52 | 1.1.1.3.9 | Scanda Modifications |  | 3d | 2010-06-30 | 2010-07-02 | 51 | 61.12d | 0d |  |
| 53 | 1.1.1.3.10 | VoBo Scanda Gmodelo | milestone | 0d | 2010-07-02 | 2010-07-02 | 52 | 61.12d |  |  |

| ID | WBS | Task | Type | Duration | Start | Finish | Predecessors | Total slack | Free slack | Constraint |
| --- | --- | --- | --- | --- | --- | --- | --- | --- | --- | --- |
| 54 | 1.1.1.4 | **12.0 Information Systems Acquisition Development and Maintenance** |  | 30d | 2010-05-10 | 2010-06-18 |  | 71.12d |  |  |
| 55 | 1.1.1.4.1 | **Security Requirements of Information Systems** |  | 2d | 2010-05-10 | 2010-05-11 |  | 71.12d |  |  |
| 56 | 1.1.1.4.1.1 | Security requirement analysis and specifications |  | 2d | 2010-05-10 | 2010-05-11 |  | 71.12d | 0d | start no earlier than 2010-05-10 |
| 57 | 1.1.1.4.2 | **Correct Processing in Applications** |  | 8d | 2010-05-12 | 2010-05-21 |  | 71.12d |  |  |
| 58 | 1.1.1.4.2.1 | Input data validation |  | 2d | 2010-05-12 | 2010-05-13 | 56 | 71.12d | 0d |  |
| 59 | 1.1.1.4.2.2 | Control of internal processing |  | 2d | 2010-05-14 | 2010-05-17 | 58 | 71.12d | 0d |  |
| 60 | 1.1.1.4.2.3 | Message integrity |  | 2d | 2010-05-18 | 2010-05-19 | 59 | 71.12d | 0d |  |
| 61 | 1.1.1.4.2.4 | Output data validation |  | 2d | 2010-05-20 | 2010-05-21 | 60 | 71.12d | 0d |  |
| 62 | 1.1.1.4.3 | **Cryptographic controls** |  | 4d | 2010-05-12 | 2010-05-17 |  | 75.12d |  |  |
| 63 | 1.1.1.4.3.1 | Policy on the use of cryptographic controls |  | 2d | 2010-05-12 | 2010-05-13 | 56 | 75.12d | 0d |  |
| 64 | 1.1.1.4.3.2 | Key Management |  | 2d | 2010-05-14 | 2010-05-17 | 63 | 75.12d | 4d |  |
| 65 | 1.1.1.4.4 | **Security of System Files** |  | 6d | 2010-05-12 | 2010-05-19 |  | 73.12d |  |  |
| 66 | 1.1.1.4.4.1 | Control of Operational software |  | 2d | 2010-05-12 | 2010-05-13 | 56 | 73.12d | 0d |  |
| 67 | 1.1.1.4.4.2 | Protection of system test data |  | 2d | 2010-05-14 | 2010-05-17 | 66 | 73.12d | 0d |  |
| 68 | 1.1.1.4.4.3 | Access control to program source library |  | 2d | 2010-05-18 | 2010-05-19 | 67 | 73.12d | 2d |  |
| 69 | 1.1.1.4.5 | **Security in Development & Support Processes** |  | 7d | 2010-05-24 | 2010-06-01 |  | 71.12d |  |  |
| 70 | 1.1.1.4.5.1 | Change Control Procedures |  | 2d | 2010-05-24 | 2010-05-25 | 56, 61, 64, 68 | 71.12d | 0d |  |
| 71 | 1.1.1.4.5.2 | Technical review of applications after Operating system changes |  | 2d | 2010-05-26 | 2010-05-27 | 70 | 71.12d | 0d |  |
| 72 | 1.1.1.4.5.3 | Restrictions on changes to software packages |  | 1d | 2010-05-28 | 2010-05-28 | 71 | 71.12d | 0d |  |
| 73 | 1.1.1.4.5.4 | Information Leakage |  | 1d | 2010-05-31 | 2010-05-31 | 72 | 71.12d | 0d |  |
| 74 | 1.1.1.4.5.5 | Outsourced Software Development |  | 1d | 2010-06-01 | 2010-06-01 | 73 | 71.12d | 0d |  |
| 75 | 1.1.1.4.6 | **Technical Vulnerability Management** |  | 2d | 2010-06-02 | 2010-06-03 |  | 71.12d |  |  |
| 76 | 1.1.1.4.6.1 | Control of technical vulnerabilities |  | 2d | 2010-06-02 | 2010-06-03 | 74 | 71.12d | 0d |  |
| 77 | 1.1.1.4.7 | Information & Documents Review |  | 2d | 2010-06-04 | 2010-06-07 | 74, 76 | 71.12d | 0d |  |
| 78 | 1.1.1.4.8 | Audits Reports |  | 2d | 2010-06-04 | 2010-06-07 | 74, 76 | 71.12d | 0d |  |
| 79 | 1.1.1.4.9 | Evidence |  | 2d | 2010-06-08 | 2010-06-09 | 77, 78 | 71.12d | 0d |  |
| 80 | 1.1.1.4.10 | Interviews |  | 1d | 2010-06-10 | 2010-06-10 | 79 | 71.12d | 0d |  |
| 81 | 1.1.1.4.11 | Final Report |  | 2d | 2010-06-11 | 2010-06-14 | 80 | 71.12d | 0d |  |
| 82 | 1.1.1.4.12 | VoBo Gmodelo |  | 2d | 2010-06-15 | 2010-06-16 | 81 | 71.12d | 0d |  |
| 83 | 1.1.1.4.13 | Scanda Modifications |  | 2d | 2010-06-17 | 2010-06-18 | 82 | 71.12d | 0d |  |
| 84 | 1.1.1.4.14 | VoBo Scanda Gmodelo | milestone | 0d | 2010-06-18 | 2010-06-18 | 83 | 71.12d |  |  |

| ID | WBS | Task | Type | Duration | Start | Finish | Predecessors | Total slack | Free slack | Constraint |
| --- | --- | --- | --- | --- | --- | --- | --- | --- | --- | --- |
| 85 | 1.1.2 | **Análisis infraestructura** |  | 30d | 2010-05-05 | 2010-06-15 |  | 74.12d |  |  |
| 86 | 1.1.2.1 | **Organización de la Seguridad de la Información** |  | 4d | 2010-05-05 | 2010-05-10 |  | 74.12d | 0d |  |
| 87 | 1.1.2.1.1 | Entrevistas para conocer proceso de gestión de riesgos con externos |  | 3d | 2010-05-05 | 2010-05-07 |  | 74.12d | 0d | start no earlier than 2010-05-05 |
| 88 | 1.1.2.1.2 | Validacion del tratamiento de riesgos con externos |  | 1d | 2010-05-10 | 2010-05-10 | 87 | 74.12d |  |  |
| 89 | 1.1.2.2 | **Gestión de Activos** |  | 5d | 2010-05-11 | 2010-05-17 | 86, 87 | 74.12d | 0d |  |
| 90 | 1.1.2.2.1 | Entrevista para conocer el proceso de gestión de activos (GA) |  | 3d | 2010-05-11 | 2010-05-13 |  | 74.12d | 0d |  |
| 91 | 1.1.2.2.2 | Revisión de documentación de GA |  | 1d | 2010-05-14 | 2010-05-14 | 90 | 74.12d | 0d |  |
| 92 | 1.1.2.2.3 | Análisis de cumplimiento GA |  | 1d | 2010-05-17 | 2010-05-17 | 91 | 74.12d |  |  |
| 93 | 1.1.2.3 | **Adquisición, Desarrollo y Mantenimiento de los Sistemas de Información** |  | 11d | 2010-05-18 | 2010-06-01 | 89, 90 | 74.12d | 0d |  |
| 94 | 1.1.2.3.1 | Entrevista para conocer el proceso de desarrollo de software |  | 5d | 2010-05-18 | 2010-05-24 |  | 74.12d | 0d |  |
| 95 | 1.1.2.3.2 | **Pruebas de penetración sobre muestra de 10 aplicaciones** |  | 6d | 2010-05-25 | 2010-06-01 | 94 | 74.12d |  |  |
| 96 | 1.1.2.3.2.1 | Validación de datos de entrada |  | 2d | 2010-05-25 | 2010-05-26 |  | 74.12d | 0d |  |
| 97 | 1.1.2.3.2.2 | Validación de procesamiento interno |  | 2d | 2010-05-27 | 2010-05-28 | 96 | 74.12d | 0d |  |
| 98 | 1.1.2.3.2.3 | Validación de control de vulnerabilidades |  | 2d | 2010-05-31 | 2010-06-01 | 97 | 74.12d |  |  |
| 99 | 1.1.2.4 | **Creación de Reportes Organización de la seguridad, Gestión de Activos y Adquisción/Desarrollo de sistemas** |  | 10d | 2010-06-02 | 2010-06-15 | 93 | 74.12d | 0d |  |
| 100 | 1.1.2.4.1 | Creación de reportes |  | 5d | 2010-06-02 | 2010-06-08 |  | 74.12d | 0d |  |
| 101 | 1.1.2.4.2 | Revisión interna de reportes (QA) |  | 5d | 2010-06-09 | 2010-06-15 | 100 | 74.12d |  |  |
| 102 | 1.1.2.5 | Entrega de Reportes Organización de la seguridad, Gestión de Activos y Adquisción/Desarrollo de sistemas | milestone | 0d | 2010-06-15 | 2010-06-15 | 99 | 74.12d |  |  |
| 103 | 1.2 | **Etapa 2** |  | 64.88d | 2010-05-10 | 2010-08-06 |  | 36.12d |  |  |
| 104 | 1.2.1 | **Análisis de procesos** |  | 45d | 2010-06-07 | 2010-08-06 |  | 36.12d |  |  |
| 105 | 1.2.1.1 | **10.0 Communications and Operations Management** |  | 45d | 2010-06-07 | 2010-08-06 |  | 36.12d |  |  |
| 106 | 1.2.1.1.1 | **Operational Procedures and responsibilities** |  | 8d | 2010-06-07 | 2010-06-16 |  | 36.12d |  |  |
| 107 | 1.2.1.1.1.1 | Documented operating Procedures |  | 2d | 2010-06-07 | 2010-06-08 |  | 36.12d | 0d | start no earlier than 2010-06-07 |
| 108 | 1.2.1.1.1.2 | Change Management |  | 2d | 2010-06-09 | 2010-06-10 | 107 | 36.12d | 0d |  |
| 109 | 1.2.1.1.1.3 | Segregation of Duties |  | 2d | 2010-06-11 | 2010-06-14 | 108 | 36.12d | 0d |  |
| 110 | 1.2.1.1.1.4 | Separation of development and Operations facilities |  | 2d | 2010-06-15 | 2010-06-16 | 109 | 36.12d | 0d |  |

| ID | WBS | Task | Duration | Start | Finish | Predecessors | Total slack | Free slack |
| --- | --- | --- | --- | --- | --- | --- | --- | --- |
| 111 | 1.2.1.1.2 | **Third Party Service Delivery Management** | 6d | 2010-06-09 | 2010-06-16 |  | 36.12d |  |
| 112 | 1.2.1.1.2.1 | Service Delivery | 2d | 2010-06-09 | 2010-06-10 | 107 | 36.12d | 0d |
| 113 | 1.2.1.1.2.2 | Monitoring and review of third party services | 2d | 2010-06-11 | 2010-06-14 | 112 | 36.12d | 0d |
| 114 | 1.2.1.1.2.3 | Manage changes to the third party services | 2d | 2010-06-15 | 2010-06-16 | 113 | 36.12d | 0d |
| 115 | 1.2.1.1.3 | **System Planning and Acceptance** | 4d | 2010-06-17 | 2010-06-22 |  | 36.12d |  |
| 116 | 1.2.1.1.3.1 | Capacity management | 2d | 2010-06-17 | 2010-06-18 | 110, 114 | 36.12d | 0d |
| 117 | 1.2.1.1.3.2 | System acceptance | 2d | 2010-06-21 | 2010-06-22 | 116 | 36.12d | 0d |
| 118 | 1.2.1.1.4 | **Protection against Malicious and Mobile Code** | 4d | 2010-06-17 | 2010-06-22 |  | 36.12d |  |
| 119 | 1.2.1.1.4.1 | Controls against malicious code | 2d | 2010-06-17 | 2010-06-18 | 110, 114 | 36.12d | 0d |
| 120 | 1.2.1.1.4.2 | Controls against Mobile code | 2d | 2010-06-21 | 2010-06-22 | 119 | 36.12d | 0d |
| 121 | 1.2.1.1.5 | **Back-Up** | 2d | 2010-06-23 | 2010-06-24 |  | 38.12d |  |
| 122 | 1.2.1.1.5.1 | Information Backup | 2d | 2010-06-23 | 2010-06-24 | 117, 120 | 38.12d | 2d |
| 123 | 1.2.1.1.6 | **Network Security Management** | 4d | 2010-06-23 | 2010-06-28 |  | 36.12d |  |
| 124 | 1.2.1.1.6.1 | Network controls | 2d | 2010-06-23 | 2010-06-24 | 117, 120 | 36.12d | 0d |
| 125 | 1.2.1.1.6.2 | Security of Network services | 2d | 2010-06-25 | 2010-06-28 | 124 | 36.12d | 0d |
| 126 | 1.2.1.1.7 | **Media Handling** | 8d | 2010-06-29 | 2010-07-08 |  | 38.12d |  |
| 127 | 1.2.1.1.7.1 | Management of removable media | 2d | 2010-06-29 | 2010-06-30 | 122, 125 | 38.12d | 0d |
| 128 | 1.2.1.1.7.2 | Disposal of Media | 2d | 2010-07-01 | 2010-07-02 | 127 | 38.12d | 0d |
| 129 | 1.2.1.1.7.3 | Information handling procedures | 2d | 2010-07-05 | 2010-07-06 | 128 | 38.12d | 0d |
| 130 | 1.2.1.1.7.4 | Security of system documentation | 2d | 2010-07-07 | 2010-07-08 | 129 | 38.12d | 2d |
| 131 | 1.2.1.1.8 | **Exchange of Information** | 10d | 2010-06-29 | 2010-07-12 |  | 36.12d |  |
| 132 | 1.2.1.1.8.1 | Information exchange policies and procedures | 2d | 2010-06-29 | 2010-06-30 | 122, 125 | 36.12d | 0d |
| 133 | 1.2.1.1.8.2 | Exchange agreements | 2d | 2010-07-01 | 2010-07-02 | 132 | 36.12d | 0d |
| 134 | 1.2.1.1.8.3 | Physical media in transit | 2d | 2010-07-05 | 2010-07-06 | 133 | 36.12d | 0d |
| 135 | 1.2.1.1.8.4 | Electronic Messaging | 2d | 2010-07-07 | 2010-07-08 | 134 | 36.12d | 0d |
| 136 | 1.2.1.1.8.5 | Business Information systems | 2d | 2010-07-09 | 2010-07-12 | 135 | 36.12d | 0d |

| ID | WBS | Task | Type | Duration | Start | Finish | Predecessors | Total slack | Free slack | Constraint |
| --- | --- | --- | --- | --- | --- | --- | --- | --- | --- | --- |
| 137 | 1.2.1.1.9 | **Electronic Commerce Services** |  | 6d | 2010-06-29 | 2010-07-06 |  | 40.12d |  |  |
| 138 | 1.2.1.1.9.1 | Electronic Commerce |  | 2d | 2010-06-29 | 2010-06-30 | 122, 125 | 40.12d | 0d |  |
| 139 | 1.2.1.1.9.2 | On-Line transactions |  | 2d | 2010-07-01 | 2010-07-02 | 138 | 40.12d | 0d |  |
| 140 | 1.2.1.1.9.3 | Publicly available information |  | 2d | 2010-07-05 | 2010-07-06 | 139 | 40.12d | 4d |  |
| 141 | 1.2.1.1.10 | **Monitoring** |  | 7d | 2010-07-13 | 2010-07-21 |  | 36.12d |  |  |
| 142 | 1.2.1.1.10.1 | Audit logging |  | 2d | 2010-07-13 | 2010-07-14 | 130, 136, 140 | 36.12d | 0d |  |
| 143 | 1.2.1.1.10.2 | Monitoring system use |  | 2d | 2010-07-15 | 2010-07-16 | 142 | 51.12d |  |  |
| 144 | 1.2.1.1.10.3 | Protection of log information |  | 2d | 2010-07-15 | 2010-07-16 | 142 | 36.12d | 0d |  |
| 145 | 1.2.1.1.10.4 | Administrator and operator logs |  | 2d | 2010-07-19 | 2010-07-20 | 144 | 49.12d |  |  |
| 146 | 1.2.1.1.10.5 | Fault logging |  | 2d | 2010-07-19 | 2010-07-20 | 144 | 36.12d | 0d |  |
| 147 | 1.2.1.1.10.6 | Clock synchronization |  | 1d | 2010-07-21 | 2010-07-21 | 146 | 36.12d | 0d |  |
| 148 | 1.2.1.1.11 | Information & Documents Review |  | 2d | 2010-07-22 | 2010-07-23 | 110, 114, 117, 120, 122, 125, 130, 136, 140, 147 | 36.12d | 0d |  |
| 149 | 1.2.1.1.12 | Audits Reports |  | 2d | 2010-07-22 | 2010-07-23 | 110, 114, 117, 120, 122, 125, 130, 136, 140, 147 | 36.12d | 0d |  |
| 150 | 1.2.1.1.13 | Evidence |  | 2d | 2010-07-26 | 2010-07-27 | 148, 149 | 36.12d | 0d |  |
| 151 | 1.2.1.1.14 | Interviews |  | 2d | 2010-07-28 | 2010-07-29 | 150 | 36.12d | 0d |  |
| 152 | 1.2.1.1.15 | Final Report |  | 2d | 2010-07-30 | 2010-08-02 | 151 | 36.12d | 0d |  |
| 153 | 1.2.1.1.16 | VoBo Gmodelo |  | 2d | 2010-08-03 | 2010-08-04 | 152 | 36.12d | 0d |  |
| 154 | 1.2.1.1.17 | Scanda Modifications |  | 2d | 2010-08-05 | 2010-08-06 | 153 | 36.12d | 0d |  |
| 155 | 1.2.1.1.18 | VoBo Scanda Gmodelo | milestone | 0d | 2010-08-06 | 2010-08-06 | 154 | 36.12d |  |  |
| 156 | 1.2.1.2 | **11.Access control** |  | 42d | 2010-06-07 | 2010-08-03 |  | 39.12d |  |  |
| 157 | 1.2.1.2.1 | **Business Requirement for Access Control** |  | 2d | 2010-06-07 | 2010-06-08 |  | 39.12d |  |  |
| 158 | 1.2.1.2.1.1 | Access control Policy |  | 2d | 2010-06-07 | 2010-06-08 |  | 39.12d | 0d | start no earlier than 2010-06-07 |
| 159 | 1.2.1.2.2 | **User Access Management** |  | 8d | 2010-06-09 | 2010-06-18 |  | 39.12d |  |  |
| 160 | 1.2.1.2.2.1 | User Registration |  | 2d | 2010-06-09 | 2010-06-10 | 158 | 39.12d | 0d |  |
| 161 | 1.2.1.2.2.2 | Privilege Measurement |  | 2d | 2010-06-11 | 2010-06-14 | 160 | 39.12d | 0d |  |
| 162 | 1.2.1.2.2.3 | User password management |  | 2d | 2010-06-15 | 2010-06-16 | 161 | 39.12d | 0d |  |
| 163 | 1.2.1.2.2.4 | Review of user access rights |  | 2d | 2010-06-17 | 2010-06-18 | 162 | 39.12d | 0d |  |

| ID | WBS | Task | Type | Duration | Start | Finish | Predecessors | Total slack | Free slack |
| --- | --- | --- | --- | --- | --- | --- | --- | --- | --- |
| 164 | 1.2.1.2.3 | **User Responsibilities** |  | 6d | 2010-06-09 | 2010-06-16 |  | 41.12d |  |
| 165 | 1.2.1.2.3.1 | Password Use |  | 2d | 2010-06-09 | 2010-06-10 | 158 | 41.12d | 0d |
| 166 | 1.2.1.2.3.2 | Unattended user equipment |  | 2d | 2010-06-11 | 2010-06-14 | 165 | 41.12d | 0d |
| 167 | 1.2.1.2.3.3 | Clear Desk and Clear Screen Policy |  | 2d | 2010-06-15 | 2010-06-16 | 166 | 41.12d | 2d |
| 168 | 1.2.1.2.4 | **Network Access control** |  | 17d | 2010-06-21 | 2010-07-13 |  | 39.12d |  |
| 169 | 1.2.1.2.4.1 | Policy on use of network services |  | 5d | 2010-06-21 | 2010-06-25 | 163, 167 | 39.12d | 0d |
| 170 | 1.2.1.2.4.2 | User authentication for external connections |  | 2d | 2010-06-28 | 2010-06-29 | 169 | 39.12d | 0d |
| 171 | 1.2.1.2.4.3 | Equipment identification in networks |  | 2d | 2010-06-30 | 2010-07-01 | 170 | 39.12d | 0d |
| 172 | 1.2.1.2.4.4 | Remote diagnostic and configuration port protection |  | 2d | 2010-07-02 | 2010-07-05 | 171 | 39.12d | 0d |
| 173 | 1.2.1.2.4.5 | Segregation in networks |  | 2d | 2010-07-06 | 2010-07-07 | 172 | 39.12d | 0d |
| 174 | 1.2.1.2.4.6 | Network connection control |  | 2d | 2010-07-08 | 2010-07-09 | 173 | 39.12d | 0d |
| 175 | 1.2.1.2.4.7 | Network Routing control |  | 2d | 2010-07-12 | 2010-07-13 | 174 | 39.12d | 0d |
| 176 | 1.2.1.2.5 | **Operating System Access Control** |  | 6d | 2010-07-14 | 2010-07-21 |  | 39.12d |  |
| 177 | 1.2.1.2.5.1 | Secure Log-on procedures |  | 2d | 2010-07-14 | 2010-07-15 | 175 | 39.12d | 0d |
| 178 | 1.2.1.2.5.2 | User identification and authentication |  | 2d | 2010-07-14 | 2010-07-15 | 175 | 39.12d | 0d |
| 179 | 1.2.1.2.5.3 | Password Management system |  | 2d | 2010-07-16 | 2010-07-19 | 177, 178 | 39.12d | 0d |
| 180 | 1.2.1.2.5.4 | Use of system utilities |  | 2d | 2010-07-16 | 2010-07-19 | 177, 178 | 39.12d | 0d |
| 181 | 1.2.1.2.5.5 | Session Time-out |  | 2d | 2010-07-20 | 2010-07-21 | 179, 180 | 48.12d |  |
| 182 | 1.2.1.2.5.6 | Limitation of connection time |  | 2d | 2010-07-20 | 2010-07-21 | 179, 180 | 39.12d | 0d |
| 183 | 1.2.1.2.6 | **Application access control** |  | 4d | 2010-07-14 | 2010-07-19 |  | 39.12d |  |
| 184 | 1.2.1.2.6.1 | Information access restriction |  | 2d | 2010-07-14 | 2010-07-15 | 175 | 39.12d | 0d |
| 185 | 1.2.1.2.6.2 | Sensitive system isolation |  | 2d | 2010-07-16 | 2010-07-19 | 184 | 39.12d | 0d |
| 186 | 1.2.1.2.7 | **Mobile Computing and Teleworking** |  | 2d | 2010-07-20 | 2010-07-21 |  | 39.12d |  |
| 187 | 1.2.1.2.7.1 | Mobile computing and communication |  | 2d | 2010-07-20 | 2010-07-21 | 185 | 48.12d |  |
| 188 | 1.2.1.2.7.2 | Teleworking |  | 2d | 2010-07-20 | 2010-07-21 | 185 | 39.12d | 0d |
| 189 | 1.2.1.2.8 | Information & Documents Review |  | 2d | 2010-07-22 | 2010-07-23 | 188, 158, 163, 167, 175, 182, 185 | 39.12d | 0d |
| 190 | 1.2.1.2.9 | Audits Reports |  | 2d | 2010-07-22 | 2010-07-23 | 188, 158, 163, 167, 175, 182, 185 | 39.12d | 0d |
| 191 | 1.2.1.2.10 | Evidence |  | 1d | 2010-07-26 | 2010-07-26 | 189, 190 | 39.12d | 0d |
| 192 | 1.2.1.2.11 | Interviews |  | 1d | 2010-07-27 | 2010-07-27 | 191 | 39.12d | 0d |
| 193 | 1.2.1.2.12 | Final Report |  | 1d | 2010-07-28 | 2010-07-28 | 192 | 39.12d | 0d |
| 194 | 1.2.1.2.13 | VoBo Gmodelo |  | 2d | 2010-07-29 | 2010-07-30 | 193 | 39.12d | 0d |
| 195 | 1.2.1.2.14 | Scanda Modifications |  | 2d | 2010-08-02 | 2010-08-03 | 194 | 39.12d | 0d |
| 196 | 1.2.1.2.15 | VoBo Scanda Gmodelo | milestone | 0d | 2010-08-03 | 2010-08-03 | 195 | 39.12d |  |

| ID | WBS | Task | Type | Duration | Start | Finish | Predecessors | Total slack | Free slack | Constraint |
| --- | --- | --- | --- | --- | --- | --- | --- | --- | --- | --- |
| 197 | 1.2.2 | **Análisis de infraestructura** |  | 59d | 2010-05-10 | 2010-07-30 |  | 42d |  |  |
| 198 | 1.2.2.1 | **Gestión de las Comunicaciones y Operaciones** |  | 35d | 2010-05-10 | 2010-06-28 |  | 42d |  |  |
| 199 | 1.2.2.1.1 | **Análisis de vulnerabilidades tecnológicas** |  | 27d | 2010-05-10 | 2010-06-16 |  | 42d | 0d |  |
| 200 | 1.2.2.1.1.1 | Muestra de Sistemas operativos |  | 10d | 2010-05-10 | 2010-05-24 |  | 42d | 0d | start no earlier than 2010-05-10 |
| 201 | 1.2.2.1.1.2 | Muestra de Dispositivos de seguridad (end-point, perimetral, transacciones) |  | 2d | 2010-05-24 | 2010-05-26 | 200 | 57d |  |  |
| 202 | 1.2.2.1.1.3 | Muestra de BD |  | 5d | 2010-05-10 | 2010-05-17 |  | 44d | 0d | start no earlier than 2010-05-10 |
| 203 | 1.2.2.1.1.4 | Muestra de Servidores WEB |  | 3d | 2010-05-17 | 2010-05-20 | 202 | 44d | 2d |  |
| 204 | 1.2.2.1.1.5 | Muestra de direcciones externas para Pruebas de intrusión |  | 5d | 2010-05-24 | 2010-05-31 | 200, 203 | 42d | 0d |  |
| 205 | 1.2.2.1.1.6 | Muestra de equipos PCs |  | 6d | 2010-05-31 | 2010-06-08 | 204 | 42d | 0d |  |
| 206 | 1.2.2.1.1.7 | Corporativo (muestar de equipos telecom y servidores locales) |  | 3d | 2010-06-08 | 2010-06-11 | 205 | 42d | 0d |  |
| 207 | 1.2.2.1.1.8 | Outsourcing (muestra de pcs, telecom, servidores locales, en el edificio Jose Cuervo) |  | 3d | 2010-06-11 | 2010-06-16 | 206 | 42d |  |  |
| 208 | 1.2.2.1.2 | Análisis de gestión de la capacidad (análisis del proceso y recolección de evidencia) |  | 5d | 2010-06-16 | 2010-06-23 | 199 | 66d | 0d |  |
| 209 | 1.2.2.1.3 | Análisis de esquema de respaldos |  | 3d | 2010-06-23 | 2010-06-28 | 208 | 66d |  |  |
| 210 | 1.2.2.2 | **Control de accesos** |  | 17d | 2010-06-16 | 2010-07-09 | 199 | 42d | 0d |  |
| 211 | 1.2.2.2.1 | Análisis de seguridad de red (muestra de segmentos de red) |  | 5d | 2010-06-16 | 2010-06-23 |  | 42d | 0d |  |
| 212 | 1.2.2.2.2 | Análisis de telecomunicaciones (muestra de dispositivos, switches, router, firewalls, conmutadores IP) |  | 3d | 2010-06-23 | 2010-06-28 | 211 | 48d | 0d |  |
| 213 | 1.2.2.2.3 | Análisis de arquitectura de seguridad |  | 3d | 2010-06-28 | 2010-07-01 | 212 | 48d |  |  |
| 214 | 1.2.2.2.4 | Análisis seguridad en configuraciones vs mejores prácticas (muestra de servidores) |  | 12d | 2010-06-23 | 2010-07-09 | 211 | 42d |  |  |
| 215 | 1.2.2.3 | **Creación de reportes Gestión de las comunicaciones y operaciones, y Control de Accesos** |  | 15d | 2010-07-09 | 2010-07-30 | 210 | 42d | 0d |  |
| 216 | 1.2.2.3.1 | Creación de reporte de dominios A6,A7 y A12 |  | 5d | 2010-07-09 | 2010-07-16 |  | 42d | 0d |  |
| 217 | 1.2.2.3.2 | Revisión interna de reportes (QA) |  | 10d | 2010-07-16 | 2010-07-30 | 216 | 42d |  |  |
| 218 | 1.2.2.4 | Entrega de Reportes Gestión de las comunicaciones y operaciones, y Control de Accesos | milestone | 0d | 2010-07-30 | 2010-07-30 | 215 | 42d |  |  |
| 219 | 1.3 | **Etapa 3** |  | 44.12d | 2010-06-28 | 2010-08-27 |  | 22d |  |  |
| 220 | 1.3.1 | **Análisis de procesos** |  | 22d | 2010-06-28 | 2010-07-27 |  | 44.12d |  |  |
| 221 | 1.3.1.1 | **8.0 Human Resource Security** |  | 20d | 2010-06-28 | 2010-07-23 |  | 46.12d |  |  |
| 222 | 1.3.1.1.1 | **Prior to Employment** |  | 9d | 2010-06-28 | 2010-07-08 |  | 46.12d |  |  |
| 223 | 1.3.1.1.1.1 | Roles and Responsibilities |  | 5d | 2010-06-28 | 2010-07-02 |  | 46.12d | 0d | start no earlier than 2010-06-28 |
| 224 | 1.3.1.1.1.2 | Screening |  | 2d | 2010-07-05 | 2010-07-06 | 223 | 46.12d | 0d |  |
| 225 | 1.3.1.1.1.3 | Terms and conditions of employment |  | 2d | 2010-07-07 | 2010-07-08 | 224 | 46.12d | 0d |  |

| ID | WBS | Task | Type | Duration | Start | Finish | Predecessors | Total slack | Free slack | Constraint |
| --- | --- | --- | --- | --- | --- | --- | --- | --- | --- | --- |
| 226 | 1.3.1.1.2 | **During Employment** |  | 5d | 2010-07-05 | 2010-07-09 |  | 46.12d |  |  |
| 227 | 1.3.1.1.2.1 | Management Responsibility |  | 5d | 2010-07-05 | 2010-07-09 | 223 | 56.12d |  |  |
| 228 | 1.3.1.1.2.2 | Information security awareness, education and training |  | 2d | 2010-07-05 | 2010-07-06 | 223 | 46.12d | 0d |  |
| 229 | 1.3.1.1.2.3 | Disciplinary process |  | 2d | 2010-07-07 | 2010-07-08 | 228 | 46.12d | 0d |  |
| 230 | 1.3.1.1.3 | **Termination or change of employment** |  | 2d | 2010-07-05 | 2010-07-06 |  | 48.12d |  |  |
| 231 | 1.3.1.1.3.1 | Termination responsibility |  | 2d | 2010-07-05 | 2010-07-06 | 223 | 59.12d |  |  |
| 232 | 1.3.1.1.3.2 | Return of assets |  | 2d | 2010-07-05 | 2010-07-06 | 223 | 59.12d |  |  |
| 233 | 1.3.1.1.3.3 | Removal of access rights |  | 2d | 2010-07-05 | 2010-07-06 | 223 | 48.12d | 2d |  |
| 234 | 1.3.1.1.4 | Information & Documents Review |  | 2d | 2010-07-09 | 2010-07-12 | 225, 229, 233 | 46.12d | 0d |  |
| 235 | 1.3.1.1.5 | Audits Reports |  | 1d | 2010-07-09 | 2010-07-09 | 225, 229, 233 | 47.12d | 1d |  |
| 236 | 1.3.1.1.6 | Evidence |  | 1d | 2010-07-13 | 2010-07-13 | 234, 235 | 46.12d | 0d |  |
| 237 | 1.3.1.1.7 | Interviews |  | 2d | 2010-07-14 | 2010-07-15 | 236 | 46.12d | 0d |  |
| 238 | 1.3.1.1.8 | Final Report |  | 2d | 2010-07-16 | 2010-07-19 | 237 | 46.12d | 0d |  |
| 239 | 1.3.1.1.9 | VoBo Gmodelo |  | 2d | 2010-07-20 | 2010-07-21 | 238 | 46.12d | 0d |  |
| 240 | 1.3.1.1.10 | Scanda Modifications |  | 2d | 2010-07-22 | 2010-07-23 | 239 | 46.12d | 0d |  |
| 241 | 1.3.1.1.11 | VoBo Scanda Gmodelo | milestone | 0d | 2010-07-23 | 2010-07-23 | 240 | 46.12d |  |  |
| 242 | 1.3.1.2 | **9.0 Physical and Environmental Security** |  | 22d | 2010-06-28 | 2010-07-27 |  | 44.12d |  |  |
| 243 | 1.3.1.2.1 | **Secure Areas** |  | 6d | 2010-06-28 | 2010-07-05 |  | 44.12d |  |  |
| 244 | 1.3.1.2.1.1 | Physical security Perimeter |  | 2d | 2010-06-28 | 2010-06-29 |  | 44.12d | 0d | start no earlier than 2010-06-28 |
| 245 | 1.3.1.2.1.2 | Physical entry controls |  | 2d | 2010-06-28 | 2010-06-29 |  | 44.12d | 0d | start no earlier than 2010-06-28 |
| 246 | 1.3.1.2.1.3 | Securing offices, rooms and facilities |  | 2d | 2010-06-30 | 2010-07-01 | 244, 245 | 44.12d | 0d |  |
| 247 | 1.3.1.2.1.4 | Protecting against external and environmental threats |  | 2d | 2010-06-30 | 2010-07-01 | 244, 245 | 62.12d |  |  |
| 248 | 1.3.1.2.1.5 | Working in secure areas |  | 2d | 2010-07-02 | 2010-07-05 | 245, 246 | 44.12d | 0d |  |
| 249 | 1.3.1.2.1.6 | Public access, delivery and loading areas |  | 2d | 2010-07-02 | 2010-07-05 | 245, 246 | 44.12d | 0d |  |

| ID | WBS | Task | Type | Duration | Start | Finish | Predecessors | Total slack | Free slack | Constraint |
| --- | --- | --- | --- | --- | --- | --- | --- | --- | --- | --- |
| 250 | 1.3.1.2.2 | **Equipment security** |  | 6d | 2010-07-06 | 2010-07-13 |  | 44.12d |  |  |
| 251 | 1.3.1.2.2.1 | Equipment sitting and protection |  | 2d | 2010-07-06 | 2010-07-07 | 248, 249 | 44.12d | 0d |  |
| 252 | 1.3.1.2.2.2 | Support utilities |  | 2d | 2010-07-06 | 2010-07-07 | 248, 249 | 44.12d | 0d |  |
| 253 | 1.3.1.2.2.3 | Cabling security |  | 2d | 2010-07-08 | 2010-07-09 | 251, 252 | 44.12d | 0d |  |
| 254 | 1.3.1.2.2.4 | Equipment Maintenance |  | 2d | 2010-07-08 | 2010-07-09 | 251, 252 | 44.12d | 0d |  |
| 255 | 1.3.1.2.2.5 | Security of equipment off-premises |  | 2d | 2010-07-12 | 2010-07-13 | 253, 254 | 54.12d |  |  |
| 256 | 1.3.1.2.2.6 | Secure disposal or reuse of equipment |  | 2d | 2010-07-12 | 2010-07-13 | 253, 254 | 54.12d |  |  |
| 257 | 1.3.1.2.2.7 | Removal of Property |  | 2d | 2010-07-12 | 2010-07-13 | 253, 254 | 44.12d | 0d |  |
| 258 | 1.3.1.2.3 | Information & Documents Review |  | 2d | 2010-07-14 | 2010-07-15 | 249, 257 | 44.12d | 0d |  |
| 259 | 1.3.1.2.4 | Audits Reports |  | 2d | 2010-07-14 | 2010-07-15 | 249, 257 | 44.12d | 0d |  |
| 260 | 1.3.1.2.5 | Evidence |  | 1d | 2010-07-16 | 2010-07-16 | 258, 259 | 44.12d | 0d |  |
| 261 | 1.3.1.2.6 | Interviews |  | 1d | 2010-07-19 | 2010-07-19 | 260 | 44.12d | 0d |  |
| 262 | 1.3.1.2.7 | Final Report |  | 2d | 2010-07-20 | 2010-07-21 | 261 | 44.12d | 0d |  |
| 263 | 1.3.1.2.8 | VoBo Gmodelo |  | 2d | 2010-07-22 | 2010-07-23 | 262 | 44.12d | 0d |  |
| 264 | 1.3.1.2.9 | Scanda Modifications |  | 2d | 2010-07-26 | 2010-07-27 | 263 | 44.12d | 0d |  |
| 265 | 1.3.1.2.10 | VoBo Scanda Gmodelo | milestone | 0d | 2010-07-27 | 2010-07-27 | 264 | 44.12d |  |  |
| 266 | 1.3.2 | **Análisis de infruaestructura** |  | 29d | 2010-07-19 | 2010-08-27 |  | 22d |  |  |
| 267 | 1.3.2.1 | **Seguridad de Recursos Humanos** |  | 20d | 2010-07-19 | 2010-08-16 |  | 22d | 0d |  |
| 268 | 1.3.2.1.1 | **Pruebas de ingeniería social** |  | 20d | 2010-07-19 | 2010-08-16 |  | 22d |  |  |
| 269 | 1.3.2.1.1.1 | Entrevistas con personal de seguridad para conocer el proceso de Awareness |  | 4d | 2010-07-19 | 2010-07-23 |  | 33d | 0d | start no earlier than 2010-07-19 |
| 270 | 1.3.2.1.1.2 | Pruebas por E-mail / Web (100 usuarios y 35 de TI) |  | 20d | 2010-07-19 | 2010-08-16 |  | 22d |  | start no earlier than 2010-07-19 |
| 271 | 1.3.2.1.1.3 | Pruebas por Teléfono (50 Usuarios y 25 TI) |  | 5d | 2010-07-23 | 2010-07-30 | 269 | 33d | 11d |  |
| 272 | 1.3.2.2 | **Creación de Reporte Seguridad de Recursos Humanos** |  | 9d | 2010-08-16 | 2010-08-27 | 267, 271 | 22d | 0d |  |
| 273 | 1.3.2.2.1 | Creación de reporte de dominio A8 |  | 4d | 2010-08-16 | 2010-08-20 |  | 22d | 0d |  |
| 274 | 1.3.2.2.2 | Revisión interna de reportes (QA) |  | 5d | 2010-08-20 | 2010-08-27 | 273 | 22d |  |  |
| 275 | 1.3.2.3 | Entrega de Reportes Seguridad de Recursos Humanos | milestone | 0d | 2010-08-27 | 2010-08-27 | 272 | 22d |  |  |

| ID | WBS | Task | Type | Duration | Start | Finish | Predecessors | Total slack | Free slack | Constraint |
| --- | --- | --- | --- | --- | --- | --- | --- | --- | --- | --- |
| 276 | 1.4 | **Etapa 4** |  | 41.12d | 2010-08-02 | 2010-09-28 |  | 0d |  |  |
| 277 | 1.4.1 | **Análisis de procesos** |  | 41d | 2010-08-02 | 2010-09-27 |  | 0.12d |  |  |
| 278 | 1.4.1.1 | **13.0 Information Security Incident Management** |  | 20d | 2010-08-02 | 2010-08-27 |  | 21.12d |  |  |
| 279 | 1.4.1.1.1 | **Reporting Information Security Events and Weaknesses** |  | 4d | 2010-08-02 | 2010-08-05 |  | 21.12d |  |  |
| 280 | 1.4.1.1.1.1 | Reporting Information security events |  | 2d | 2010-08-02 | 2010-08-03 |  | 21.12d | 0d | start no earlier than 2010-08-02 |
| 281 | 1.4.1.1.1.2 | Reporting security weaknesses |  | 2d | 2010-08-04 | 2010-08-05 | 280 | 21.12d | 0d |  |
| 282 | 1.4.1.1.2 | **Management of Information Security Incidents and Improvements** |  | 6d | 2010-08-06 | 2010-08-13 |  | 21.12d |  |  |
| 283 | 1.4.1.1.2.1 | Responsibilities and Procedures |  | 2d | 2010-08-06 | 2010-08-09 | 281 | 21.12d | 0d |  |
| 284 | 1.4.1.1.2.2 | Learning for Information security incidents |  | 2d | 2010-08-10 | 2010-08-11 | 283 | 21.12d | 0d |  |
| 285 | 1.4.1.1.2.3 | Collection of evidence |  | 2d | 2010-08-12 | 2010-08-13 | 284 | 21.12d | 0d |  |
| 286 | 1.4.1.1.3 | Information & Documents Review |  | 2d | 2010-08-16 | 2010-08-17 | 281, 285 | 21.12d | 0d |  |
| 287 | 1.4.1.1.4 | Audits Reports |  | 1d | 2010-08-16 | 2010-08-16 | 281, 285 | 22.12d | 1d |  |
| 288 | 1.4.1.1.5 | Evidence |  | 1d | 2010-08-18 | 2010-08-18 | 286, 287 | 21.12d | 0d |  |
| 289 | 1.4.1.1.6 | Interviews |  | 1d | 2010-08-19 | 2010-08-19 | 288 | 21.12d | 0d |  |
| 290 | 1.4.1.1.7 | Final Report |  | 2d | 2010-08-20 | 2010-08-23 | 289 | 21.12d | 0d |  |
| 291 | 1.4.1.1.8 | VoBo Gmodelo |  | 2d | 2010-08-24 | 2010-08-25 | 290 | 21.12d | 0d |  |
| 292 | 1.4.1.1.9 | Scanda Modifications |  | 2d | 2010-08-26 | 2010-08-27 | 291 | 21.12d | 0d |  |
| 293 | 1.4.1.1.10 | VoBo Scanda Gmodelo | milestone | 0d | 2010-08-27 | 2010-08-27 | 292 | 21.12d |  |  |
| 294 | 1.4.1.2 | **14.0 Business Continuity Management** |  | 20d | 2010-08-02 | 2010-08-27 |  | 21.12d |  |  |
| 295 | 1.4.1.2.1 | **Information Security Aspects of Business Continuity Management** |  | 8d | 2010-08-02 | 2010-08-11 |  | 21.12d |  |  |
| 296 | 1.4.1.2.1.1 | Including Information Security in Business continuity management process |  | 2d | 2010-08-02 | 2010-08-03 |  | 21.12d | 0d | start no earlier than 2010-08-02 |
| 297 | 1.4.1.2.1.2 | Business continuity and Risk Assessment |  | 2d | 2010-08-04 | 2010-08-05 | 296 | 21.12d | 0d |  |
| 298 | 1.4.1.2.1.3 | Developing and implementing continuity plans including information security |  | 2d | 2010-08-06 | 2010-08-09 | 296, 297 | 21.12d | 0d |  |
| 299 | 1.4.1.2.1.4 | Business continuity planning framework |  | 2d | 2010-08-10 | 2010-08-11 | 297, 298 | 33.12d |  |  |
| 300 | 1.4.1.2.1.5 | Testing, maintaining and re-assessing business continuity plans |  | 2d | 2010-08-10 | 2010-08-11 | 297, 298 | 21.12d | 0d |  |
| 301 | 1.4.1.2.2 | Information & Documents Review |  | 4d | 2010-08-12 | 2010-08-17 | 300 | 21.12d | 0d |  |
| 302 | 1.4.1.2.3 | Audits Reports |  | 2d | 2010-08-12 | 2010-08-13 | 300 | 23.12d | 2d |  |
| 303 | 1.4.1.2.4 | Evidence |  | 1d | 2010-08-18 | 2010-08-18 | 301, 302 | 21.12d | 0d |  |
| 304 | 1.4.1.2.5 | Interviews |  | 1d | 2010-08-19 | 2010-08-19 | 303 | 21.12d | 0d |  |
| 305 | 1.4.1.2.6 | Final Report |  | 2d | 2010-08-20 | 2010-08-23 | 304 | 21.12d | 0d |  |
| 306 | 1.4.1.2.7 | VoBo Gmodelo |  | 2d | 2010-08-24 | 2010-08-25 | 305 | 21.12d | 0d |  |
| 307 | 1.4.1.2.8 | Scanda Modifications |  | 2d | 2010-08-26 | 2010-08-27 | 306 | 21.12d | 0d |  |
| 308 | 1.4.1.2.9 | VoBo Scanda Gmodelo | milestone | 0d | 2010-08-27 | 2010-08-27 | 307 | 21.12d |  |  |

| ID | WBS | Task | Type | Duration | Start | Finish | Predecessors | Total slack | Free slack | Constraint |
| --- | --- | --- | --- | --- | --- | --- | --- | --- | --- | --- |
| 309 | 1.4.1.3 | **15.0 Compliance** |  | 21d | 2010-08-30 | 2010-09-27 |  | 0.12d |  |  |
| 310 | 1.4.1.3.1 | **Compliance with Legal Requirements** |  | 8d | 2010-08-30 | 2010-09-08 |  | 0.12d |  |  |
| 311 | 1.4.1.3.1.1 | Identification of applicable legislations |  | 2d | 2010-08-30 | 2010-08-31 |  | 0.12d | 0d | start no earlier than 2010-08-30 |
| 312 | 1.4.1.3.1.2 | Intellectual Property Rights ( IPR) |  | 2d | 2010-09-01 | 2010-09-02 | 311 | 0.12d | 0d |  |
| 313 | 1.4.1.3.1.3 | Protection of organizational records |  | 2d | 2010-09-03 | 2010-09-06 | 311, 312 | 0.12d | 0d |  |
| 314 | 1.4.1.3.1.4 | Data Protection and privacy of personal information |  | 2d | 2010-09-03 | 2010-09-06 | 311, 312 | 0.12d | 0d |  |
| 315 | 1.4.1.3.1.5 | Prevention of misuse of information processing facilities |  | 2d | 2010-09-07 | 2010-09-08 | 313, 314 | 0.12d | 0d |  |
| 316 | 1.4.1.3.1.6 | Regulation of cryptographic controls |  | 2d | 2010-09-07 | 2010-09-08 | 313, 314 | 0.12d | 0d |  |
| 317 | 1.4.1.3.2 | **Compliance with Security Policies and Standards and Technical compliance** |  | 2d | 2010-09-09 | 2010-09-10 |  | 0.12d |  |  |
| 318 | 1.4.1.3.2.1 | Compliance with security policy |  | 2d | 2010-09-09 | 2010-09-10 | 315, 316 | 0.12d | 0d |  |
| 319 | 1.4.1.3.2.2 | Technical compliance checking |  | 2d | 2010-09-09 | 2010-09-10 | 315, 316 | 0.12d | 0d |  |
| 320 | 1.4.1.3.3 | **Information System Audit Considerations** |  | 2d | 2010-09-13 | 2010-09-14 |  | 0.12d |  |  |
| 321 | 1.4.1.3.3.1 | Information System Audit controls |  | 2d | 2010-09-13 | 2010-09-14 | 318, 319 | 9.12d |  |  |
| 322 | 1.4.1.3.3.2 | Protection of information system audit tools |  | 2d | 2010-09-13 | 2010-09-14 | 318, 319 | 0.12d | 0d |  |
| 323 | 1.4.1.3.4 | Information & Documents Review |  | 2d | 2010-09-15 | 2010-09-16 | 316, 319, 322 | 0.12d | 0d |  |
| 324 | 1.4.1.3.5 | Audits Reports |  | 1d | 2010-09-15 | 2010-09-15 | 316, 319, 322 | 1.12d | 1d |  |
| 325 | 1.4.1.3.6 | Evidence |  | 1d | 2010-09-17 | 2010-09-17 | 323, 324 | 0.12d | 0d |  |
| 326 | 1.4.1.3.7 | Interviews |  | 1d | 2010-09-20 | 2010-09-20 | 325 | 0.12d | 0d |  |
| 327 | 1.4.1.3.8 | Final Report |  | 1d | 2010-09-21 | 2010-09-21 | 326 | 0.12d | 0d |  |
| 328 | 1.4.1.3.9 | VoBo Gmodelo |  | 2d | 2010-09-22 | 2010-09-23 | 327 | 0.12d | 0d |  |
| 329 | 1.4.1.3.10 | Scanda Modifications |  | 2d | 2010-09-24 | 2010-09-27 | 328 | 0.12d | 0d |  |
| 330 | 1.4.1.3.11 | VoBo Scanda Gmodelo | milestone | 0d | 2010-09-27 | 2010-09-27 | 329 | 0.12d |  |  |
| 331 | 1.4.2 | **Análisis de infraestructura** |  | 14d | 2010-09-01 | 2010-09-21 |  | 5d |  |  |
| 332 | 1.4.2.1 | **13. Cumplimiento** |  | 9d | 2010-09-01 | 2010-09-14 |  | 5d | 0d |  |
| 333 | 1.4.2.1.1 | Análisis de cumplimiento ténico y protección de la información de auditoria |  | 5d | 2010-09-01 | 2010-09-08 |  | 5d | 0d | start no earlier than 2010-09-01 |
| 334 | 1.4.2.1.2 | Estudio de retorno de la inversión / Uso de tecnología de seguridad |  | 4d | 2010-09-08 | 2010-09-14 | 333 | 5d |  |  |

| ID | WBS | Task | Type | Duration | Start | Finish | Predecessors | Total slack | Free slack | Constraint |
| --- | --- | --- | --- | --- | --- | --- | --- | --- | --- | --- |
| 335 | 1.4.2.2 | **Creación de Reporte Cumplimiento** |  | 5d | 2010-09-14 | 2010-09-21 | 332, 333 | 5d | 0d |  |
| 336 | 1.4.2.2.1 | Creación de reporte de dominio A15 |  | 2d | 2010-09-14 | 2010-09-16 |  | 8d |  |  |
| 337 | 1.4.2.2.2 | Revisión interna de reportes (QA) |  | 5d | 2010-09-14 | 2010-09-21 |  | 5d |  |  |
| 338 | 1.4.2.3 | Entrega de Reporte Cumplimiento | milestone | 0d | 2010-09-21 | 2010-09-21 | 335 | 5d |  |  |
| 339 | 1.4.3 | **Integración de resultados de Análisis de Infraestructura** |  | 13d | 2010-09-09 | 2010-09-28 |  | 0d |  |  |
| 340 | 1.4.3.1 | Reporte detallado (integración de todos los resultados) |  | 5d | 2010-09-09 | 2010-09-16 |  | 0d |  | start no earlier than 2010-09-09 |
| 341 | 1.4.3.2 | Reporte ejecutivo Análisis de infraestructura |  | 3d | 2010-09-16 | 2010-09-21 | 340 | 0d |  |  |
| 342 | 1.4.3.3 | Revisión interna de reportes (QA) |  | 5d | 2010-09-21 | 2010-09-28 | 341 | 0d |  |  |
