# Transformacion 1

Schedule from MS Project, 2021-11-18 to 2022-06-20, A marks actual dates.

## Calendars

- Estándar: Mon-Fri 09:00-13:00, 15:00-19:00; Sat-Sun off.

## Resources

| Resource |
| --- |
| Consultor contabilidad |
| Consultor ingresos |
| Coordinador ingresos |
| Director de finanzas |

## Schedule

| ID | WBS | Task | Duration | Start | Finish | Predecessors | Complete | Remaining | Baseline start | Baseline finish | Baseline duration | Total slack | Free slack | Resources | Work | Actual work |
| --- | --- | --- | --- | --- | --- | --- | --- | --- | --- | --- | --- | --- | --- | --- | --- | --- |
| 1 | 1 | **Proyecto de transformación** | 153d | 2021-11-18 A | 2022-06-20 |  | 21% | 120.2d | 2021-11-18 | 2022-06-20 | 153d | 0d |  |  | 160h | 122h |
| 2 | 1.1 | Conocer la estructura organizacional | 10d | 2021-11-23 A | 2021-12-03 |  | 2% | 9.8d | 2021-11-23 | 2021-12-03 | 10d | 141d |  | Consultor contabilidad; Consultor ingresos [25%] | 40h | 2h |
| 3 | 1.2 | Encuesta de servicio al cliente actual | 6d | 2021-11-23 A | 2021-11-29 A | 2SS | 100% |  | 2021-11-23 | 2021-11-29 | 6d |  |  | Consultor contabilidad; Consultor ingresos; Coordinador ingresos | 120h | 120h |
| 4 | 1.3 | **Mapeo y reingeniería de procesos** | 36d | 2021-11-30 A | 2022-01-18 |  | 31% | 24.98d | 2021-11-30 | 2022-01-18 | 36d | 13d |  |  |  |  |
| 5 | 1.3.1 | **Contabilidad** | 12d | 2021-11-30 A | 2021-12-15 |  | 38% | 7.41d | 2021-11-30 | 2021-12-15 | 12d | 0d |  |  |  |  |
| 6 | 1.3.1.1 | Mapeo | 9d | 2021-11-30 A | 2021-12-10 | 3 | 51% | 4.41d | 2021-11-30 | 2021-12-10 | 9d | 0d |  |  |  |  |
| 7 | 1.3.1.2 | Reingeniería | 3d | 2021-12-13 | 2021-12-15 | 6 |  |  | 2021-12-13 | 2021-12-15 | 3d | 0d |  |  |  |  |
| 8 | 1.3.2 | **Ingresos (cuentas por cobrar)** | 12d | 2021-11-30 A | 2021-12-15 |  | 38% | 7.41d | 2021-11-30 | 2021-12-15 | 12d | 37d |  |  |  |  |
| 9 | 1.3.2.1 | Mapeo | 9d | 2021-11-30 A | 2021-12-10 | 3 | 51% | 4.41d | 2021-11-30 | 2021-12-10 | 9d | 37d | 0d |  |  |  |
| 10 | 1.3.2.2 | Reingeniería | 3d | 2021-12-13 | 2021-12-15 | 9 |  |  | 2021-12-13 | 2021-12-15 | 3d | 37d |  |  |  |  |
| 11 | 1.3.3 | **Egresos (cuentas por pagar)** | 12d | 2021-11-30 A | 2021-12-15 |  | 38% | 7.41d | 2021-11-30 | 2021-12-15 | 12d | 12d |  |  |  |  |
| 12 | 1.3.3.1 | Mapeo | 9d | 2021-11-30 A | 2021-12-10 | 3 | 51% | 4.41d | 2021-11-30 | 2021-12-10 | 9d | 12d | 0d |  |  |  |
| 13 | 1.3.3.2 | Reingeniería | 3d | 2021-12-13 | 2021-12-15 | 12 |  |  | 2021-12-13 | 2021-12-15 | 3d | 12d |  |  |  |  |
| 14 | 1.3.4 | **Reporteo** | 12d | 2021-12-16 | 2021-12-31 |  |  |  | 2021-12-16 | 2021-12-31 | 12d | 0d |  |  |  |  |
| 15 | 1.3.4.1 | Mapeo | 9d | 2021-12-16 | 2021-12-28 | 5 |  |  | 2021-12-16 | 2021-12-28 | 9d | 0d |  |  |  |  |
| 16 | 1.3.4.2 | Reingeniería | 3d | 2021-12-29 | 2021-12-31 | 15 |  |  | 2021-12-29 | 2021-12-31 | 3d | 0d |  |  |  |  |
| 17 | 1.3.5 | **Cierres mensual y anual** | 12d | 2022-01-03 | 2022-01-18 |  |  |  | 2022-01-03 | 2022-01-18 | 12d | 13d |  |  |  |  |
| 18 | 1.3.5.1 | Mapeo | 9d | 2022-01-03 | 2022-01-13 | 14 |  |  | 2022-01-03 | 2022-01-13 | 9d | 13d | 0d |  |  |  |
| 19 | 1.3.5.2 | Reingeniería | 3d | 2022-01-14 | 2022-01-18 | 18 |  |  | 2022-01-14 | 2022-01-18 | 3d | 13d |  |  |  |  |
| 20 | 1.3.6 | **Nómina** | 12d | 2021-11-30 A | 2021-12-15 |  | 38% | 7.41d | 2021-11-30 | 2021-12-15 | 12d | 37d |  |  |  |  |
| 21 | 1.3.6.1 | Mapeo | 9d | 2021-11-30 A | 2021-12-10 | 3 | 51% | 4.41d | 2021-11-30 | 2021-12-10 | 9d | 37d | 0d |  |  |  |
| 22 | 1.3.6.2 | Reingeniería | 3d | 2021-12-13 | 2021-12-15 | 21 |  |  | 2021-12-13 | 2021-12-15 | 3d | 37d |  |  |  |  |
| 23 | 1.3.7 | **Reclutamiento y selección** | 12d | 2021-11-30 A | 2021-12-15 |  | 38% | 7.41d | 2021-11-30 | 2021-12-15 | 12d | 37d |  |  |  |  |
| 24 | 1.3.7.1 | Mapeo | 9d | 2021-11-30 A | 2021-12-10 | 3 | 51% | 4.41d | 2021-11-30 | 2021-12-10 | 9d | 37d | 0d |  |  |  |
| 25 | 1.3.7.2 | Reingeniería | 3d | 2021-12-13 | 2021-12-15 | 24 |  |  | 2021-12-13 | 2021-12-15 | 3d | 37d |  |  |  |  |

| ID | WBS | Task | Type | Duration | Start | Finish | Predecessors | Complete | Remaining | Baseline start | Baseline finish | Baseline duration | Total slack | Free slack |
| --- | --- | --- | --- | --- | --- | --- | --- | --- | --- | --- | --- | --- | --- | --- |
| 26 | 1.3.8 | **Compras** |  | 12d | 2021-11-30 A | 2021-12-15 |  | 38% | 7.41d | 2021-11-30 | 2021-12-15 | 12d | 37d |  |
| 27 | 1.3.8.1 | Mapeo |  | 9d | 2021-11-30 A | 2021-12-10 | 3 | 51% | 4.41d | 2021-11-30 | 2021-12-10 | 9d | 37d | 0d |
| 28 | 1.3.8.2 | Reingeniería |  | 3d | 2021-12-13 | 2021-12-15 | 27 |  |  | 2021-12-13 | 2021-12-15 | 3d | 37d |  |
| 29 | 1.3.9 | **Conciliaciones bancarias** |  | 12d | 2021-11-30 A | 2021-12-15 |  | 38% | 7.41d | 2021-11-30 | 2021-12-15 | 12d | 37d |  |
| 30 | 1.3.9.1 | Mapeo |  | 9d | 2021-11-30 A | 2021-12-10 | 3 | 51% | 4.41d | 2021-11-30 | 2021-12-10 | 9d | 37d | 0d |
| 31 | 1.3.9.2 | Reingeniería |  | 3d | 2021-12-13 | 2021-12-15 | 30 |  |  | 2021-12-13 | 2021-12-15 | 3d | 37d |  |
| 32 | 1.3.10 | **Interfases internas y externas** |  | 12d | 2021-11-30 A | 2021-12-15 |  | 38% | 7.41d | 2021-11-30 | 2021-12-15 | 12d | 37d |  |
| 33 | 1.3.10.1 | Mapeo |  | 9d | 2021-11-30 A | 2021-12-10 | 3 | 51% | 4.41d | 2021-11-30 | 2021-12-10 | 9d | 37d | 0d |
| 34 | 1.3.10.2 | Reingeniería |  | 3d | 2021-12-13 | 2021-12-15 | 33 |  |  | 2021-12-13 | 2021-12-15 | 3d | 37d |  |
| 35 | 1.3.11 | Procesos clave | milestone | 0d | 2021-12-31 | 2021-12-31 | 11, 14 |  |  | 2021-12-31 | 2021-12-31 | 0d | 0d |  |
| 36 | 1.4 | **Implementación de la tecnología ERP** |  | 78d | 2022-01-03 | 2022-04-20 |  |  |  | 2022-01-03 | 2022-04-20 | 78d | 0d |  |
| 37 | 1.4.1 | **Evaluación y selección de plataformas** |  | 25d | 2022-01-03 | 2022-02-04 |  |  |  | 2022-01-03 | 2022-02-04 | 25d | 0d |  |
| 38 | 1.4.1.1 | Evaluación |  | 15d | 2022-01-03 | 2022-01-21 | 35 |  |  | 2022-01-03 | 2022-01-21 | 15d | 0d |  |
| 39 | 1.4.1.2 | Selección |  | 10d | 2022-01-24 | 2022-02-04 | 38 |  |  | 2022-01-24 | 2022-02-04 | 10d | 0d |  |
| 40 | 1.4.2 | **Instalación y configuración** |  | 20d | 2022-02-07 | 2022-03-04 | 37, 4 |  |  | 2022-02-07 | 2022-03-04 | 20d | 0d |  |
| 41 | 1.4.2.1 | Hardware |  | 5d | 2022-02-07 | 2022-02-11 | 39 |  |  | 2022-02-07 | 2022-02-11 | 5d | 0d |  |
| 42 | 1.4.2.2 | Software |  | 5d | 2022-02-14 | 2022-02-18 | 41 |  |  | 2022-02-14 | 2022-02-18 | 5d | 0d |  |
| 43 | 1.4.2.3 | Comunicaciones |  | 10d | 2022-02-21 | 2022-03-04 | 42 |  |  | 2022-02-21 | 2022-03-04 | 10d | 0d |  |
| 44 | 1.4.3 | Pruebas |  | 28d | 2022-03-07 | 2022-04-13 | 40 |  |  | 2022-03-07 | 2022-04-13 | 28d | 0d |  |
| 45 | 1.4.4 | Despliegue |  | 5d | 2022-04-14 | 2022-04-20 | 44 |  |  | 2022-04-14 | 2022-04-20 | 5d | 0d |  |
| 46 | 1.5 | **Gestión del cambio** |  | 153d | 2021-11-18 A | 2022-06-20 |  | 12% | 135d | 2021-11-18 | 2022-06-20 | 153d | 0d |  |
| 47 | 1.5.1 | **Comunicación** |  | 116d | 2021-11-18 A | 2022-04-28 |  | 50% | 58d | 2021-11-18 | 2022-04-28 | 116d | 37d |  |
| 48 | 1.5.1.1 | Interna |  | 1d | 2021-11-30 A | 2021-11-30 A | 3 | 100% |  | 2021-11-30 | 2021-11-30 | 1d |  |  |
| 49 | 1.5.1.2 | Inicial |  | 1d | 2021-11-18 A | 2021-11-18 A | 3SS-3d | 100% |  | 2021-11-18 | 2021-11-18 | 1d |  |  |
| 50 | 1.5.1.3 | Avance |  | 1d | 2022-02-07 | 2022-02-07 | 39 |  |  | 2022-02-07 | 2022-02-07 | 1d | 95d |  |
| 51 | 1.5.1.4 | Despliegue |  | 1d | 2022-04-28 | 2022-04-28 | 45FS+5d |  |  | 2022-04-28 | 2022-04-28 | 1d | 37d |  |
| 52 | 1.5.2 | Capacitación y entrenamiento |  | 28d | 2022-04-21 | 2022-05-30 | 45 |  |  | 2022-04-21 | 2022-05-30 | 28d | 0d |  |
| 53 | 1.5.3 | Certificación |  | 15d | 2022-05-31 | 2022-06-20 | 52 |  |  | 2022-05-31 | 2022-06-20 | 15d | 0d |  |
| 54 | 1.5.4 | Bonos |  | 1d | 2021-11-23 A | 2021-11-23 A |  | 100% |  | 2021-11-23 | 2021-11-23 | 1d |  |  |
| 55 | 1.5.5 | Promociones |  | 1d | 2021-11-23 A | 2021-11-23 A |  | 100% |  | 2021-11-23 | 2021-11-23 | 1d |  |  |
| 56 | 1.5.6 | Liquidaciones |  | 1d | 2021-11-23 A | 2021-11-23 A |  | 100% |  | 2021-11-23 | 2021-11-23 | 1d |  |  |
| 57 | 1.5.7 | Movilizaciones |  | 1d | 2021-11-23 A | 2021-11-23 A |  | 100% |  | 2021-11-23 | 2021-11-23 | 1d |  |  |

| ID | WBS | Task | Duration | Start | Finish | Complete | Baseline start | Baseline finish | Baseline duration |
| --- | --- | --- | --- | --- | --- | --- | --- | --- | --- |
| 58 | 1.6 | **Puesta en marcha** | 1d | 2021-11-23 A | 2021-11-23 A | 100% | 2021-11-23 | 2021-11-23 | 1d |
| 59 | 1.6.1 | Republica Mexicana | 1d | 2021-11-23 A | 2021-11-23 A | 100% | 2021-11-23 | 2021-11-23 | 1d |
| 60 | 1.6.2 | Regiones | 1d | 2021-11-23 A | 2021-11-23 A | 100% | 2021-11-23 | 2021-11-23 | 1d |
| 61 | 1.6.3 | **Unidades de negocio** | 1d | 2021-11-23 A | 2021-11-23 A | 100% | 2021-11-23 | 2021-11-23 | 1d |
| 62 | 1.6.3.1 | **Definir criterios y decidir grupos de despliegue** | 1d | 2021-11-23 A | 2021-11-23 A | 100% | 2021-11-23 | 2021-11-23 | 1d |
| 63 | 1.6.3.1.1 | Tamaño | 1d | 2021-11-23 A | 2021-11-23 A | 100% | 2021-11-23 | 2021-11-23 | 1d |
| 64 | 1.6.3.1.2 | Ubicación | 1d | 2021-11-23 A | 2021-11-23 A | 100% | 2021-11-23 | 2021-11-23 | 1d |
| 65 | 1.6.3.1.3 | Región | 1d | 2021-11-23 A | 2021-11-23 A | 100% | 2021-11-23 | 2021-11-23 | 1d |
| 66 | 1.6.3.2 | **Roll out 1** | 1d | 2021-11-23 A | 2021-11-23 A | 100% | 2021-11-23 | 2021-11-23 | 1d |
| 67 | 1.6.3.2.1 | Unidad 1 | 1d | 2021-11-23 A | 2021-11-23 A | 100% | 2021-11-23 | 2021-11-23 | 1d |
| 68 | 1.6.3.2.2 | Unidad 2 | 1d | 2021-11-23 A | 2021-11-23 A | 100% | 2021-11-23 | 2021-11-23 | 1d |
| 69 | 1.6.3.3 | **Rollout 2** | 1d | 2021-11-23 A | 2021-11-23 A | 100% | 2021-11-23 | 2021-11-23 | 1d |
| 70 | 1.6.3.3.1 | Unidad 3 | 1d | 2021-11-23 A | 2021-11-23 A | 100% | 2021-11-23 | 2021-11-23 | 1d |
| 71 | 1.6.3.3.2 | Unidad 4 | 1d | 2021-11-23 A | 2021-11-23 A | 100% | 2021-11-23 | 2021-11-23 | 1d |
| 72 | 1.6.3.4 | Entrega formal | 1d | 2021-11-23 A | 2021-11-23 A | 100% | 2021-11-23 | 2021-11-23 | 1d |
